# Proyect1-4

Schedule from MS Project, 2011-08-01 to 2012-04-30, 4 hours a day.

## Calendars

- Estándar: Mon-Fri 09:00-13:00, 15:00-19:00; Sat-Sun off.

## Resources

| Resource |
| --- |
| Mauricio Erazo |
| Erik Arcos |
| William Idrobo |
| Carlos Gonzales |
| David Perez |
| Sandra Gomez |

## Schedule

| ID | WBS | Task | Duration | Start | Finish | Predecessors | Total slack | Constraint | Resources | Work |
| --- | --- | --- | --- | --- | --- | --- | --- | --- | --- | --- |
| 1 | PC07 | **Proyecto** | 391.94d | 2011-08-01 | 2012-04-30 |  | 0d |  |  | 6271h |
| 2 | PC07.1 | **Órdenes de Compra** | 66.69d | 2011-08-01 | 2011-09-15 |  | 0d |  |  | 1067h |
| 3 | PC07.1.13 | PN02 Modificar proceso de órdenes de compra | 52.5h | 2011-08-01 | 2011-08-09 |  | 0d | start no earlier than 2011-08-01 | William Idrobo; Carlos Gonzales; Erik Arcos; Mauricio Erazo | 210h |
| 4 | PC07.1.14 | PN08 Crear proceso de generación de informes | 50h | 2011-08-09 | 2011-08-17 | 3 | 0d |  | William Idrobo; Carlos Gonzales; Erik Arcos; Mauricio Erazo | 200h |
| 5 | PC07.1.15 | PD01 Modificar Cliente, Fabricante y Comercio | 8.75h | 2011-08-17 | 2011-08-18 | 4 | 0d |  | Mauricio Erazo; William Idrobo; Carlos Gonzales; Erik Arcos | 35h |
| 6 | PC07.1.16 | PD02 Modificar Orden de Compra y Producto | 4.25h | 2011-08-18 | 2011-08-19 | 5 | 0d |  | Mauricio Erazo; William Idrobo; Carlos Gonzales; Erik Arcos | 17h |
| 7 | PC07.1.17 | PD03 Crear Categoría y Catálogo | 5h | 2011-08-19 | 2011-08-22 | 6 | 0d |  | Mauricio Erazo; William Idrobo; Carlos Gonzales; Erik Arcos | 20h |
| 8 | PC07.1.18 | PD06 Crear Auditoria | 3.75h | 2011-08-22 | 2011-08-22 | 7 | 0d |  | Mauricio Erazo; William Idrobo; Carlos Gonzales; Erik Arcos | 15h |
| 9 | PC07.1.19 | PA01 Integración con sistema de riesgos internacional | 15h | 2011-08-22 | 2011-08-24 | 8 | 0d |  | William Idrobo; Carlos Gonzales; Erik Arcos; Mauricio Erazo | 60h |
| 10 | PC07.1.20 | PA03 Integración con sistema de pagos | 15h | 2011-08-24 | 2011-08-26 | 9 | 0d |  | William Idrobo; Carlos Gonzales; Erik Arcos; Mauricio Erazo | 60h |
| 11 | PC07.1.21 | PA04 Adaptación sistema POManager | 50h | 2011-08-26 | 2011-09-05 | 10 | 0d |  | Carlos Gonzales; William Idrobo; Erik Arcos; Mauricio Erazo | 200h |
| 12 | PC07.1.22 | PA07 Integracion sistema InternationalRiskCualificationSystem | 12.5h | 2011-09-05 | 2011-09-07 | 11 | 0d |  | Carlos Gonzales; William Idrobo; Erik Arcos; Mauricio Erazo | 50h |
| 13 | PC07.1.23 | PT01 Configuración plataformas existentes | 25h | 2011-09-07 | 2011-09-12 | 12 | 0d |  | Mauricio Erazo; William Idrobo; Carlos Gonzales; Erik Arcos | 100h |
| 14 | PC07.1.24 | PT02 Optimización de reportes | 25h | 2011-09-12 | 2011-09-15 | 13 | 0d |  | Mauricio Erazo; William Idrobo; Carlos Gonzales; Erik Arcos | 100h |
| 15 | PC07.2 | **Subasta Inversa** | 47.94d | 2011-09-15 | 2011-10-19 | 2 | 0d |  |  | 767h |
| 16 | PC07.2.8 | PN04 Modificar proceso de subasta inversa | 50h | 2011-09-15 | 2011-09-23 |  | 0d |  | Carlos Gonzales; William Idrobo; Erik Arcos; Mauricio Erazo | 200h |
| 17 | PC07.2.9 | PN08 Crear proceso de generación de informes | 50h | 2011-09-23 | 2011-10-03 | 16 | 0d |  | Carlos Gonzales; William Idrobo; Erik Arcos; Mauricio Erazo | 200h |
| 18 | PC07.2.10 | PD02 Modificar Orden de Compra y Producto | 4.25h | 2011-10-03 | 2011-10-04 | 17 | 0d |  | Carlos Gonzales; William Idrobo; Erik Arcos; Mauricio Erazo | 17h |
| 19 | PC07.2.11 | PD06 Crear Auditoria | 22.5h | 2011-10-04 | 2011-10-07 | 18 | 0d |  | Carlos Gonzales; William Idrobo; Erik Arcos; Mauricio Erazo | 90h |
| 20 | PC07.2.12 | PA03 Integración con sistema de pagos | 15h | 2011-10-07 | 2011-10-11 | 19 | 0d |  | Carlos Gonzales; William Idrobo; Erik Arcos; Mauricio Erazo | 60h |
| 21 | PC07.2.13 | PT01 Configuración plataformas existentes | 25h | 2011-10-11 | 2011-10-14 | 20 | 0d |  | William Idrobo; Carlos Gonzales; Erik Arcos; Mauricio Erazo | 100h |
| 22 | PC07.2.14 | PT02 Optimización de reportes | 25h | 2011-10-14 | 2011-10-19 | 21 | 0d |  | William Idrobo; Carlos Gonzales; Erik Arcos; Mauricio Erazo | 100h |
| 23 | PC07.3 | **Facturacion** | 67.31d | 2011-10-19 | 2011-12-05 | 15 | 0d |  |  | 1077h |
| 24 | PC07.3.13 | PN05 Modificar proceso de facturar y confirmar pagos | 52.5h | 2011-10-19 | 2011-10-27 |  | 0d |  | Carlos Gonzales; William Idrobo; Erik Arcos; Mauricio Erazo | 210h |
| 25 | PC07.3.14 | PN08 Crear proceso de generación de informes | 50h | 2011-10-27 | 2011-11-07 | 24 | 0d |  | Carlos Gonzales; William Idrobo; Erik Arcos; Mauricio Erazo | 200h |
| 26 | PC07.3.15 | PD02 Modificar Orden de Compra y Producto | 4.25h | 2011-11-07 | 2011-11-07 | 25 | 0d |  | Carlos Gonzales; William Idrobo; Erik Arcos; Mauricio Erazo | 17h |
| 27 | PC07.3.16 | PD04 Crear TRM | 3.75h | 2011-11-07 | 2011-11-08 | 26 | 0d |  | Carlos Gonzales; William Idrobo; Erik Arcos; Mauricio Erazo | 15h |
| 28 | PC07.3.17 | PD06 Crear Auditoria | 3.75h | 2011-11-08 | 2011-11-08 | 27 | 0d |  | Carlos Gonzales; William Idrobo; Erik Arcos; Mauricio Erazo | 15h |
| 29 | PC07.3.18 | PA02 Implementación de TRM | 52.5h | 2011-11-08 | 2011-11-17 | 28 | 0d |  | Carlos Gonzales; William Idrobo; Erik Arcos; Mauricio Erazo | 210h |
| 30 | PC07.3.19 | PA03 Integración con sistema de pagos | 15h | 2011-11-17 | 2011-11-21 | 29 | 0d |  | Carlos Gonzales; William Idrobo; Erik Arcos; Mauricio Erazo | 60h |
| 31 | PC07.3.20 | PA06 Invocacion sistema TRMSystem | 12.5h | 2011-11-21 | 2011-11-22 | 30 | 0d |  | Carlos Gonzales; William Idrobo; Erik Arcos; Mauricio Erazo | 50h |
| 32 | PC07.3.21 | PA08 Integracion sistema TRMSystem | 12.5h | 2011-11-22 | 2011-11-24 | 31 | 0d |  | Carlos Gonzales; William Idrobo; Erik Arcos; Mauricio Erazo | 50h |
| 33 | PC07.3.22 | PA09 Integracion sistema PaymentSystem | 12.5h | 2011-11-24 | 2011-11-25 | 32 | 0d |  | Carlos Gonzales; William Idrobo; Erik Arcos; Mauricio Erazo | 50h |
| 34 | PC07.3.23 | PT01 Configuración plataformas existentes | 25h | 2011-11-25 | 2011-11-30 | 33 | 0d |  | Carlos Gonzales; William Idrobo; Erik Arcos; Mauricio Erazo | 100h |
| 35 | PC07.3.24 | PT02 Optimización de reportes | 25h | 2011-11-30 | 2011-12-05 | 34 | 0d |  | Carlos Gonzales; William Idrobo; Erik Arcos; Mauricio Erazo | 100h |

| ID | WBS | Task | Duration | Start | Finish | Predecessors | Total slack | Resources | Work |
| --- | --- | --- | --- | --- | --- | --- | --- | --- | --- |
| 36 | PC07.4 | **Registro de Entidades** | 66.25d | 2011-12-05 | 2012-01-20 | 23 | 0d |  | 1060h |
| 37 | PC07.4.13 | PN01 Modificar registro de entidad frente al MarketPlace | 35h | 2011-12-05 | 2011-12-12 |  | 0d | Carlos Gonzales; William Idrobo; Erik Arcos; Mauricio Erazo | 140h |
| 38 | PC07.4.14 | PN03 Modificar proceso de procesar PRICAT | 10h | 2011-12-12 | 2011-12-13 | 37 | 0d | Carlos Gonzales; William Idrobo; Erik Arcos; Mauricio Erazo | 40h |
| 39 | PC07.4.15 | PN06 Modificar la actualización de referencias de comercio | 22.5h | 2011-12-13 | 2011-12-16 | 38 | 0d | Carlos Gonzales; William Idrobo; Erik Arcos; Mauricio Erazo | 90h |
| 40 | PC07.4.16 | PN08 Crear proceso de generación de informes | 52.5h | 2011-12-16 | 2011-12-26 | 39 | 0d | Carlos Gonzales; William Idrobo; Erik Arcos; Mauricio Erazo | 210h |
| 41 | PC07.4.17 | PD01 Modificar Cliente, Fabricante y Comercio | 8.75h | 2011-12-26 | 2011-12-28 | 40 | 0d | Carlos Gonzales; William Idrobo; Erik Arcos; Mauricio Erazo | 35h |
| 42 | PC07.4.18 | PD03 Crear Categoría y Catálogo | 5h | 2011-12-28 | 2011-12-28 | 41 | 0d | Carlos Gonzales; William Idrobo; Erik Arcos; Mauricio Erazo | 20h |
| 43 | PC07.4.19 | PD06 Crear Auditoria | 3.75h | 2011-12-28 | 2011-12-29 | 42 | 0d | Carlos Gonzales; William Idrobo; Erik Arcos; Mauricio Erazo | 15h |
| 44 | PC07.4.20 | PA01 Integración con sistema de riesgos internacional | 15h | 2011-12-29 | 2012-01-02 | 43 | 0d | Carlos Gonzales; William Idrobo; Erik Arcos; Mauricio Erazo | 60h |
| 45 | PC07.4.21 | PA07 Integracion sistema InternationalRiskCualificationSystem | 12.5h | 2012-01-02 | 2012-01-03 | 44 | 0d | Carlos Gonzales; William Idrobo; Erik Arcos; Mauricio Erazo | 50h |
| 46 | PC07.4.22 | PA04 Adaptación sistema POManager | 50h | 2012-01-03 | 2012-01-11 | 45 | 0d | Carlos Gonzales; William Idrobo; Erik Arcos; Mauricio Erazo | 200h |
| 47 | PC07.4.23 | PT01 Configuración plataformas existentes | 25h | 2012-01-11 | 2012-01-16 | 46 | 0d | Carlos Gonzales; William Idrobo; Erik Arcos; Mauricio Erazo | 100h |
| 48 | PC07.4.24 | PT02 Optimización de reportes | 25h | 2012-01-16 | 2012-01-20 | 47 | 0d | Carlos Gonzales; William Idrobo; Erik Arcos; Mauricio Erazo | 100h |
| 49 | PC07.5 | **PQRS** | 93.44d | 2012-01-20 | 2012-03-26 | 36 | 0d |  | 1495h |
| 50 | PC07.5.8 | PN08 Crear proceso de generación de informes | 50h | 2012-01-20 | 2012-01-30 |  | 0d | Carlos Gonzales; William Idrobo; Erik Arcos; Mauricio Erazo | 200h |
| 51 | PC07.5.9 | PN09 Crear proceso de gestión de solicitudes de postventa | 225h | 2012-01-30 | 2012-03-08 | 50 | 0d | Carlos Gonzales; William Idrobo; Erik Arcos; Mauricio Erazo | 900h |
| 52 | PC07.5.10 | PD05 Crear Reclamos y Calificación | 7.5h | 2012-03-08 | 2012-03-09 | 51 | 0d | Carlos Gonzales; William Idrobo; Erik Arcos; Mauricio Erazo | 30h |
| 53 | PC07.5.11 | PD06 Crear Auditoria | 3.75h | 2012-03-09 | 2012-03-09 | 52 | 0d | Carlos Gonzales; William Idrobo; Erik Arcos; Mauricio Erazo | 15h |
| 54 | PC07.5.12 | PA05 Adaptación sistema de auditoría | 37.5h | 2012-03-09 | 2012-03-16 | 53 | 0d | William Idrobo; Carlos Gonzales; Erik Arcos; Mauricio Erazo | 150h |
| 55 | PC07.5.13 | PT01 Configuración plataformas existentes | 25h | 2012-03-16 | 2012-03-21 | 54 | 0d | Carlos Gonzales; William Idrobo; Erik Arcos; Mauricio Erazo | 100h |
| 56 | PC07.5.14 | PT02 Optimización de reportes | 25h | 2012-03-21 | 2012-03-26 | 55 | 0d | Carlos Gonzales; William Idrobo; Erik Arcos; Mauricio Erazo | 100h |
| 57 | PC07.6 | **Calificaciones** | 50.31d | 2012-03-26 | 2012-04-30 | 49 | 0d |  | 805h |
| 58 | PC07.6.8 | PN07 Crear proceso de calificaciones | 52.5h | 2012-03-26 | 2012-04-04 |  | 0d | Carlos Gonzales; William Idrobo; Erik Arcos; Mauricio Erazo | 210h |
| 59 | PC07.6.9 | PN08 Crear proceso de generación de informes | 50h | 2012-04-04 | 2012-04-12 | 58 | 0d | Carlos Gonzales; William Idrobo; Erik Arcos; Mauricio Erazo | 200h |
| 60 | PC07.6.10 | PD05 Crear Reclamos y Calificación | 7.5h | 2012-04-12 | 2012-04-13 | 59 | 0d | Carlos Gonzales; William Idrobo; Erik Arcos; Mauricio Erazo | 30h |
| 61 | PC07.6.11 | PD06 Crear Auditoria | 3.75h | 2012-04-13 | 2012-04-16 | 60 | 0d | Carlos Gonzales; William Idrobo; Erik Arcos; Mauricio Erazo | 15h |
| 62 | PC07.6.12 | PA05 Adaptación sistema de auditoría | 37.5h | 2012-04-16 | 2012-04-20 | 61 | 0d | Carlos Gonzales; William Idrobo; Erik Arcos; Mauricio Erazo | 150h |
| 63 | PC07.6.13 | PT01 Configuración plataformas existentes | 25h | 2012-04-20 | 2012-04-25 | 62 | 0d | Carlos Gonzales; William Idrobo; Erik Arcos; Mauricio Erazo | 100h |
| 64 | PC07.6.14 | PT02 Optimización de reportes | 25h | 2012-04-25 | 2012-04-30 | 63 | 0d | Carlos Gonzales; William Idrobo; Erik Arcos; Mauricio Erazo | 100h |
