# Proyect1

Schedule from MS Project, 2011-10-29 to 2011-11-22.

## Calendars

- Estándar: Mon-Fri 09:00-13:00, 15:00-19:00; Sat-Sun off. Exceptions (off unless hours are given): 2011-10-29 to 2011-10-30 09:00-13:00, 15:00-19:00, 2011-11-05 to 2011-11-06 09:00-13:00, 15:00-19:00, 2011-11-12 to 2011-11-13 09:00-13:00, 15:00-19:00.

## Resources

| Resource |
| --- |
| Sandra |
| William |
| Erik |
| Mauricio |
| Carlos |
| David |

## Schedule

| ID | WBS | Task | Duration | Start | Finish | Predecessors | Total slack | Free slack | Constraint | Resources | Work |
| --- | --- | --- | --- | --- | --- | --- | --- | --- | --- | --- | --- |
| 1 | 1 | **Merket place proyecto 3 ciclo 3** | 23d? | 2011-10-29 09:00 | 2011-11-22 19:00 |  | 0d |  |  |  | 433.5h |
| 2 | 1.1 | **Estabilización** | 0.5d? | 2011-10-29 09:00 | 2011-10-29 13:00 |  | 14.69d | 0d |  |  | 8h |
| 3 | 1.1.1 | Actualizar repositorio (BPEL - CRM) | 0.5d? | 2011-10-29 09:00 | 2011-10-29 13:00 |  | 14.69d |  | start no earlier than 2011-10-29 09:00 | Sandra | 4h |
| 4 | 1.1.2 | Actualizar repositorio LEG | 0.5d? | 2011-10-29 09:00 | 2011-10-29 13:00 |  | 14.69d |  | start no earlier than 2011-10-29 09:00 | Erik | 4h |
| 5 | 1.2 | [SEG] Reunión de inicio ciclo 3 | 0.5d? | 2011-10-29 09:00 | 2011-10-29 13:00 |  | 22.5d |  | start no earlier than 2011-10-29 09:00 | Carlos; David; Erik; Sandra; William; Mauricio | 24h |
| 6 | 1.3 | **Parte 1** | 13.19d? | 2011-10-29 15:00 | 2011-11-11 16:30 | 2 | 4.06d | 0d |  |  | 143h |
| 7 | 1.3.1 | [DOC] Estrategía | 0.5d? | 2011-10-30 09:00 | 2011-10-30 13:00 |  | 16.25d |  | start no earlier than 2011-10-30 09:00 | David | 4h |
| 8 | 1.3.2 | [DOC] Alcance | 0.5d? | 2011-10-30 09:00 | 2011-10-30 13:00 | 9 | 16.25d |  |  | Sandra | 4h |
| 9 | 1.3.3 | [DOC] Estimación | 0.5d? | 2011-10-29 15:00 | 2011-10-29 19:00 |  | 16.25d | 0d |  | Carlos | 4h |
| 10 | 1.3.4 | [DOC] Plan de proyecto | 0.38d? | 2011-10-30 09:00 | 2011-10-30 12:00 |  | 16.38d |  | start no earlier than 2011-10-30 09:00 | Carlos; William | 6h |
| 11 | 1.3.5 | [DOC] Plan de calidad | 0.5d? | 2011-10-31 09:00 | 2011-10-31 13:00 |  | 15.25d |  | start no earlier than 2011-10-31 09:00 | Carlos | 4h |
| 12 | 1.3.6 | [DOC] Plan de mejoramiento detallado | 0.5d? | 2011-10-31 09:00 | 2011-10-31 13:00 |  | 15.25d |  | start no earlier than 2011-10-31 09:00 | William | 4h |
| 13 | 1.3.7 | [DOC] Plan de riesgos | 0.5d? | 2011-10-30 09:00 | 2011-10-30 13:00 |  | 16.25d |  | start no earlier than 2011-10-30 09:00 | Mauricio | 4h |
| 14 | 1.3.8 | [CRM] Consultar Cliente | 0.38d? | 2011-10-31 09:00 | 2011-10-31 12:00 |  | 13.19d | 1.62d | start no earlier than 2011-10-31 09:00 | Sandra | 3h |
| 15 | 1.3.9 | [OSB] Consultar Cliente | 0.31d? | 2011-11-02 09:00 | 2011-11-02 11:30 | 14 | 13.06d | 0d | start no earlier than 2011-11-02 09:00 | Sandra | 2.5h |
| 16 | 1.3.10 | [BPEL] Consultar Cliente | 0.38d? | 2011-11-02 11:30 | 2011-11-02 16:30 | 15 | 13.06d |  |  | William | 3h |
| 17 | 1.3.11 | [CRM] Crear cliente | 0.38d? | 2011-11-04 09:00 | 2011-11-04 12:00 | 14 | 9.56d | 0.62d | start no earlier than 2011-11-04 09:00 | Sandra | 3h |
| 18 | 1.3.12 | [OSB] Crear Cliente | 0.31d? | 2011-11-05 09:00 | 2011-11-05 11:30 | 17 | 10.06d | 0d | start no earlier than 2011-11-05 09:00 | Sandra | 2.5h |
| 19 | 1.3.13 | [BPEL] Crear cliente | 0.38d? | 2011-11-05 11:30 | 2011-11-05 16:30 | 18 | 10.06d |  |  | William | 3h |
| 20 | 1.3.14 | [CRM] Crear contactos | 0.38d? | 2011-11-05 09:00 | 2011-11-05 12:00 | 17 | 8.94d | 0.62d | start no earlier than 2011-11-05 09:00 | Sandra | 3h |
| 21 | 1.3.15 | [OSB] Crear contactos | 0.31d? | 2011-11-06 09:00 | 2011-11-06 11:30 | 20 | 9.06d | 0d | start no earlier than 2011-11-06 09:00 | Sandra | 2.5h |
| 22 | 1.3.16 | [BPEL] Crear contactos | 0.38d? | 2011-11-06 11:30 | 2011-11-06 16:30 | 21 | 9.06d |  |  | William | 3h |
| 23 | 1.3.17 | [CRM] Asignar los productos CRM | 0.38d? | 2011-11-06 09:00 | 2011-11-06 12:00 | 20 | 8.31d | 0.62d | start no earlier than 2011-11-06 09:00 | Sandra | 3h |
| 24 | 1.3.18 | [OSB] Asignar los productos CRM | 0.31d? | 2011-11-07 09:00 | 2011-11-07 11:30 | 23 | 7.94d | 0d | start no earlier than 2011-11-07 09:00 | Sandra | 2.5h |
| 25 | 1.3.19 | [BPEL] Asignar los productos CRM | 0.5d? | 2011-11-07 11:30 | 2011-11-07 17:30 | 24 | 7.94d |  |  | William | 4h |
| 26 | 1.3.20 | [CRM] radicar solicitud CRM | 0.38d? | 2011-11-09 09:00 | 2011-11-09 12:00 | 23 | 5.69d | 1.62d | start no earlier than 2011-11-09 09:00 | Sandra | 3h |
| 27 | 1.3.21 | [OSB] radicar solicitud CRM | 0.31d? | 2011-11-11 09:00 | 2011-11-11 11:30 | 26 | 4.06d | 0d | start no earlier than 2011-11-11 09:00 | Sandra | 2.5h |
| 28 | 1.3.22 | [BPEL] radicar solicitud CRM | 0.38d? | 2011-11-11 11:30 | 2011-11-11 16:30 | 27 | 4.06d |  |  | William | 3h |

| ID | WBS | Task | Duration | Start | Finish | Predecessors | Total slack | Free slack | Constraint | Resources | Work |
| --- | --- | --- | --- | --- | --- | --- | --- | --- | --- | --- | --- |
| 29 | 1.3.23 | **Verificación crediticia (Risk Qualification)** | 5.5d? | 2011-10-30 09:00 | 2011-11-04 13:00 |  | 11.25d |  |  |  | 12h |
| 30 | 1.3.23.1 | [LEG] Consultar Confecamaras | 0.25d? | 2011-10-30 09:00 | 2011-10-30 11:00 |  | 16.5d |  | start no earlier than 2011-10-30 09:00 | Erik | 2h |
| 31 | 1.3.23.2 | [LEG] Consultar Datacredito | 0.25d? | 2011-10-30 09:00 | 2011-10-30 11:00 |  | 16.5d |  | start no earlier than 2011-10-30 09:00 | Erik | 2h |
| 32 | 1.3.23.3 | [LEG] Consultar Antilavado | 0.25d? | 2011-10-30 09:00 | 2011-10-30 11:00 |  | 16.5d |  | start no earlier than 2011-10-30 09:00 | Erik | 2h |
| 33 | 1.3.23.4 | [LEG] Consultar Lista Clinton | 0.25d? | 2011-10-31 09:00 | 2011-10-31 11:00 |  | 15.5d |  | start no earlier than 2011-10-31 09:00 | Erik | 2h |
| 34 | 1.3.23.5 | [LEG] Crear Verificación Internacional | 0.5d? | 2011-11-04 09:00 | 2011-11-04 13:00 |  | 11.25d |  | start no earlier than 2011-11-04 09:00 | Erik | 4h |
| 35 | 1.3.24 | [OSB] Verificación crediticia | 0.31d? | 2011-11-05 09:00 | 2011-11-05 11:30 |  | 9.94d | 0d | start no earlier than 2011-11-05 09:00 | Mauricio | 2.5h |
| 36 | 1.3.25 | [BPEL] Verificación crediticia | 0.5d? | 2011-11-05 11:30 | 2011-11-05 17:30 | 35 | 9.94d |  |  | William | 4h |
| 37 | 1.3.26 | [PORTAL] Vista contactos | 1d? | 2011-11-05 09:00 | 2011-11-05 19:00 |  | 9.75d |  | start no earlier than 2011-11-05 09:00 | Carlos | 8h |
| 38 | 1.3.27 | [PORTAL] Vista producto | 1d? | 2011-11-05 09:00 | 2011-11-05 19:00 |  | 9.75d |  | start no earlier than 2011-11-05 09:00 | Carlos | 8h |
| 39 | 1.3.28 | [DOC] Prueba de aceptación | 0.25d? | 2011-11-06 09:00 | 2011-11-06 11:00 |  | 9.5d |  | start no earlier than 2011-11-06 09:00 | Carlos | 2h |
| 40 | 1.3.29 | [SEG] Reunión de seguimiento | 0.5d? | 2011-11-05 09:00 | 2011-11-05 13:00 |  | 10.25d |  | start no earlier than 2011-11-05 09:00 | Carlos; David; Erik; Sandra; William; Mauricio | 24h |
| 41 | 1.3.30 | [DOC] Seguimiento plan | 0.38d? | 2011-11-07 09:00 | 2011-11-07 12:00 |  | 8.38d |  | start no earlier than 2011-11-07 09:00 | Carlos | 3h |
| 42 | 1.3.31 | [DOC] Seguimiento riesgos | 0.38d? | 2011-10-31 09:00 | 2011-10-31 12:00 |  | 15.38d |  | start no earlier than 2011-10-31 09:00 | Mauricio | 3h |
| 43 | 1.3.32 | [DOC] Seguimiento de calidad | 0.38d? | 2011-11-05 09:00 | 2011-11-05 12:00 |  | 10.38d |  | start no earlier than 2011-11-05 09:00 | Erik | 3h |
| 44 | 1.4 | **Parte 2** | 7.12d? | 2011-11-11 16:30 | 2011-11-18 17:30 | 6 | 0d |  |  |  | 122h |
| 45 | 1.4.1 | [CRM] Actualizar estado solicitud | 0.38d? | 2011-11-12 09:00 | 2011-11-12 12:00 |  | 3.75d | 0d | start no earlier than 2011-11-12 09:00 | Sandra | 3h |
| 46 | 1.4.2 | [OSB] Actualizar estado solicitud | 0.31d? | 2011-11-12 12:00 | 2011-11-12 16:30 | 45 | 5.62d | 0d |  | Mauricio | 2.5h |
| 47 | 1.4.3 | [BPEL] Actualizar estado solicitud | 0.5d? | 2011-11-12 16:30 | 2011-11-13 10:30 | 46 | 5.62d |  |  | William | 4h |
| 48 | 1.4.4 | [CRM] Activar cliente | 0.38d? | 2011-11-12 12:00 | 2011-11-12 17:00 | 45 | 3.75d | 0d |  | Sandra | 3h |
| 49 | 1.4.5 | [OSB] Activar cliente | 0.31d? | 2011-11-12 17:00 | 2011-11-13 09:30 | 48 | 5.25d | 0d |  | Mauricio | 2.5h |
| 50 | 1.4.6 | [BPEL] Activar cliente | 0.5d? | 2011-11-13 09:30 | 2011-11-13 15:30 | 49 | 5.25d |  |  | William | 4h |
| 51 | 1.4.7 | [CRM] consultar contacto | 0.38d? | 2011-11-12 17:00 | 2011-11-13 10:00 | 48 | 3.75d | 0d |  | Sandra | 3h |
| 52 | 1.4.8 | [OSB] consultar contacto | 0.31d? | 2011-11-13 10:00 | 2011-11-13 12:30 | 51 | 4.88d | 0d |  | Mauricio | 2.5h |
| 53 | 1.4.9 | [BPEL] consultar contacto | 0.5d? | 2011-11-13 12:30 | 2011-11-13 18:30 | 52 | 4.88d |  |  | William | 4h |
| 54 | 1.4.10 | [CRM] activar contacto | 0.38d? | 2011-11-13 10:00 | 2011-11-13 13:00 | 51 | 3.75d | 0d |  | Sandra | 3h |
| 55 | 1.4.11 | [OSB] activar contacto | 0.31d? | 2011-11-13 15:00 | 2011-11-13 17:30 | 54 | 4.5d | 0d |  | Mauricio | 2.5h |
| 56 | 1.4.12 | [BPEL] activar contacto | 0.5d? | 2011-11-13 17:30 | 2011-11-14 11:30 | 55 | 4.5d |  |  | William | 4h |
| 57 | 1.4.13 | [CRM] consultar Producto | 0.38d? | 2011-11-16 09:00 | 2011-11-16 12:00 | 54 | 1.25d | 0d | start no earlier than 2011-11-16 09:00 | Sandra | 3h |
| 58 | 1.4.14 | [OSB] consultar Producto | 0.31d? | 2011-11-16 12:00 | 2011-11-16 16:30 | 57 | 1.62d | 1.31d |  | Mauricio | 2.5h |
| 59 | 1.4.15 | [BPEL] consultar Producto | 0.5d? | 2011-11-18 09:00 | 2011-11-18 13:00 | 58 | 0.31d |  | start no earlier than 2011-11-18 09:00 | William | 4h |
| 60 | 1.4.16 | [CRM] activar producto en el CRM | 0.38d? | 2011-11-16 12:00 | 2011-11-16 17:00 | 57 | 1.25d |  |  | Sandra | 3h |
| 61 | 1.4.17 | [OSB] activar producto en el CRM | 0.31d? | 2011-11-18 09:00 | 2011-11-18 11:30 | 60 | 0d |  | start no earlier than 2011-11-18 09:00 | Mauricio | 2.5h |
| 62 | 1.4.18 | [BPEL] activar producto en el CRM | 0.5d? | 2011-11-18 11:30 | 2011-11-18 17:30 | 61 | 0d |  |  | William | 4h |

| ID | WBS | Task | Duration | Start | Finish | Predecessors | Total slack | Free slack | Constraint | Resources | Work |
| --- | --- | --- | --- | --- | --- | --- | --- | --- | --- | --- | --- |
| 63 | 1.4.19 | **Gestión de facturación (Billing chargers)** | 1.06d? | 2011-11-11 16:30 | 2011-11-12 17:00 |  | 6.06d |  |  |  | 8.5h |
| 64 | 1.4.19.1 | [LEG] Crear cuenta de facturación | 0.25d? | 2011-11-11 16:30 | 2011-11-11 18:30 |  | 6.06d | 0d | start no earlier than 2011-11-05 09:00 | Erik | 2h |
| 65 | 1.4.19.2 | [OSB] Crear cuenta de facturación | 0.31d? | 2011-11-11 18:30 | 2011-11-12 11:00 | 64 | 6.06d | 0d |  | Mauricio | 2.5h |
| 66 | 1.4.19.3 | [BPEL] Crear cuenta de facturación | 0.5d? | 2011-11-12 11:00 | 2011-11-12 17:00 | 65 | 6.06d |  |  | William | 4h |
| 67 | 1.4.20 | [BPEL] Gestión Correo electrónico | 0.38d? | 2011-11-11 16:30 | 2011-11-12 09:30 |  | 6.75d |  |  | William | 3h |
| 68 | 1.4.21 | **Gestión de usuario (LDAP)** | 1.06d? | 2011-11-12 09:00 | 2011-11-13 09:30 |  | 5.75d |  |  |  | 8.5h |
| 69 | 1.4.21.1 | [LEG] Crear Usuario | 0.25d? | 2011-11-12 09:00 | 2011-11-12 11:00 |  | 5.75d | 0d | start no earlier than 2011-11-12 09:00 | Erik | 2h |
| 70 | 1.4.21.2 | [OSB] Crear Usuario | 0.31d? | 2011-11-12 11:00 | 2011-11-12 15:30 | 69 | 5.75d | 0d |  | Mauricio | 2.5h |
| 71 | 1.4.21.3 | [BPEL] Crear Usuario | 0.5d? | 2011-11-12 15:30 | 2011-11-13 09:30 | 70 | 5.75d |  |  | William | 4h |
| 72 | 1.4.22 | [PORTAL] Vista registro de entidad | 1.25d? | 2011-11-12 09:00 | 2011-11-13 11:00 |  | 5.56d |  | start no earlier than 2011-11-12 09:00 | Carlos | 10h |
| 73 | 1.4.23 | [DOC] Prueba de aceptación | 0.25d? | 2011-11-12 09:00 | 2011-11-12 11:00 |  | 6.56d |  | start no earlier than 2011-11-12 09:00 | Carlos | 2h |
| 74 | 1.4.24 | [SEG] Reunión de seguimiento | 0.5d? | 2011-11-12 09:00 | 2011-11-12 13:00 |  | 6.31d |  | start no earlier than 2011-11-12 09:00 | Carlos; David; Erik; Sandra; William; Mauricio | 24h |
| 75 | 1.4.25 | [DOC] Seguimiento plan | 0.38d? | 2011-11-13 09:00 | 2011-11-13 12:00 |  | 5.44d |  | start no earlier than 2011-11-13 09:00 | Carlos | 3h |
| 76 | 1.4.26 | [DOC] Seguimiento riesgos | 0.38d? | 2011-11-11 16:30 | 2011-11-12 09:30 |  | 6.75d |  |  | Mauricio | 3h |
| 77 | 1.4.27 | [DOC] Seguimiento de calidad | 0.38d? | 2011-11-13 09:00 | 2011-11-13 12:00 |  | 5.44d |  | start no earlier than 2011-11-13 09:00 | Erik | 3h |
| 78 | 1.5 | **Parte 3** | 2.19d? | 2011-11-18 17:30 | 2011-11-22 19:00 | 44 | 0d |  |  |  | 136.5h |
| 79 | 1.5.1 | [CRM] Actualizar cliente | 0.38d? | 2011-11-18 17:30 | 2011-11-21 10:30 |  | 0d |  |  | Sandra | 3h |
| 80 | 1.5.2 | [OSB] Actualizar cliente | 0.31d? | 2011-11-21 10:30 | 2011-11-21 13:00 | 79 | 1d | 0d |  | Mauricio | 2.5h |
| 81 | 1.5.3 | [BPEL] Actualizar cliente | 0.5d? | 2011-11-21 15:00 | 2011-11-21 19:00 | 80 | 1d |  |  | William | 4h |
| 82 | 1.5.4 | [CRM] Consultar Contactos | 0.38d? | 2011-11-21 10:30 | 2011-11-21 15:30 | 79 | 0d |  |  | Sandra | 3h |
| 83 | 1.5.5 | [OSB] Consultar Contactos | 0.31d? | 2011-11-21 15:30 | 2011-11-21 18:00 | 82 | 0.75d | 0d |  | Mauricio | 2.5h |
| 84 | 1.5.6 | [BPEL] Consultar Contactos | 0.38d? | 2011-11-21 18:00 | 2011-11-22 11:00 | 83 | 0.75d |  |  | William | 3h |
| 85 | 1.5.7 | [CRM] Actualizar Contacto | 0.38d? | 2011-11-21 15:30 | 2011-11-21 18:30 | 82 | 0d |  |  | Sandra | 3h |
| 86 | 1.5.8 | [OSB] Actualizar Contacto | 0.31d? | 2011-11-21 18:30 | 2011-11-22 11:00 | 85 | 0.38d | 0d |  | Mauricio | 2.5h |
| 87 | 1.5.9 | [BPEL] Actualizar Contacto | 0.38d? | 2011-11-22 11:00 | 2011-11-22 16:00 | 86 | 0.38d |  |  | William | 3h |
| 88 | 1.5.10 | [CRM] Actualizar Producto | 0.38d? | 2011-11-21 18:30 | 2011-11-22 11:30 | 85 | 0d |  |  | Sandra | 3h |
| 89 | 1.5.11 | [OSB] Actualizar Producto | 0.31d? | 2011-11-22 11:30 | 2011-11-22 16:00 | 88 | 0d |  |  | Mauricio | 2.5h |
| 90 | 1.5.12 | [BPEL] Actualizar Producto | 0.38d? | 2011-11-22 16:00 | 2011-11-22 19:00 | 89 | 0d |  |  | William | 3h |
| 91 | 1.5.13 | [LEG] Actualizar cliente PO | 0.25d? | 2011-11-18 17:30 | 2011-11-21 09:30 |  | 0.75d | 0d |  | Erik | 2h |
| 92 | 1.5.14 | [OSB] Actualizar cliente PO | 0.31d? | 2011-11-21 09:30 | 2011-11-21 12:00 | 91 | 1.12d | 0d |  | Mauricio | 2.5h |
| 93 | 1.5.15 | [BPEL] Actualizar cliente PO | 0.5d? | 2011-11-21 12:00 | 2011-11-21 18:00 | 92 | 1.12d |  |  | William | 4h |
| 94 | 1.5.16 | [LEG] Actualizar cliente Transact | 0.25d? | 2011-11-21 09:30 | 2011-11-21 11:30 | 91 | 0.75d | 0d |  | Erik | 2h |
| 95 | 1.5.17 | [OSB] Actualizar cliente Transact | 0.31d? | 2011-11-21 11:30 | 2011-11-21 16:00 | 94 | 0.88d | 0d |  | Mauricio | 2.5h |
| 96 | 1.5.18 | [BPEL] Actualizar cliente Transact | 0.5d? | 2011-11-21 16:00 | 2011-11-22 10:00 | 95 | 0.88d |  |  | William | 4h |
| 97 | 1.5.19 | [LEG] Actualizar cliente LDAP | 0.25d? | 2011-11-21 11:30 | 2011-11-21 15:30 | 94 | 0.75d | 0d |  | Erik | 2h |
| 98 | 1.5.20 | [OSB] Actualizar cliente LDAP | 0.38d? | 2011-11-21 15:30 | 2011-11-21 18:30 | 97 | 0.75d | 0d |  | Mauricio | 3h |
| 99 | 1.5.21 | [BPEL] Actualizar cliente LDAP | 0.31d? | 2011-11-21 18:30 | 2011-11-22 11:00 | 98 | 0.75d |  |  | William | 2.5h |
| 100 | 1.5.22 | [PORTAL] Vista edición de entidad | 1.25d? | 2011-11-18 17:30 | 2011-11-22 09:30 |  | 0.94d |  |  | Carlos | 10h |
| 101 | 1.5.23 | [DOC] Prueba de aceptación | 0.25d? | 2011-11-18 17:30 | 2011-11-21 09:30 |  | 1.94d |  |  | Carlos | 2h |
| 102 | 1.5.24 | [SEG] Reunión de seguimiento | 0.5d? | 2011-11-18 17:30 | 2011-11-21 11:30 |  | 1.69d |  |  | Carlos; David; Erik; Sandra; William; Mauricio | 24h |
| 103 | 1.5.25 | [DOC] Seguimiento plan | 0.38d? | 2011-11-18 17:30 | 2011-11-21 10:30 |  | 1.81d |  |  | Carlos | 3h |
| 104 | 1.5.26 | [DOC] Seguimiento riesgos | 0.38d? | 2011-11-18 17:30 | 2011-11-21 10:30 |  | 1.81d |  |  | Mauricio | 3h |
| 105 | 1.5.27 | [DOC] Seguimiento de calidad | 0.38d? | 2011-11-18 17:30 | 2011-11-21 10:30 |  | 1.81d |  |  | Erik | 3h |
| 106 | 1.5.28 | [PRO] Catalogo Proceso | 1d? | 2011-11-18 17:30 | 2011-11-21 17:30 |  | 1.19d |  |  | William | 8h |
| 107 | 1.5.29 | [PRO] Proceso en BPMN | 0.5d? | 2011-11-18 17:30 | 2011-11-21 11:30 |  | 1.69d |  |  | William | 4h |
| 108 | 1.5.30 | [PRO] Diagrama de navegación | 0.5d? | 2011-11-18 17:30 | 2011-11-21 11:30 |  | 1.69d |  |  | Carlos | 4h |
| 109 | 1.5.31 | [PRO] Diagrama entidad relación | 0.5d? | 2011-11-18 17:30 | 2011-11-21 11:30 |  | 1.69d |  |  | Erik | 4h |
| 110 | 1.5.32 | [PRO] Portafolio de servicios Legado | 0.5d? | 2011-11-18 17:30 | 2011-11-21 11:30 |  | 1.69d |  |  | Erik | 4h |
| 111 | 1.5.33 | [PRO] Portafolio de servicios OSB Proxy | 0.5d? | 2011-11-18 17:30 | 2011-11-21 11:30 |  | 1.69d |  |  | Mauricio | 4h |
| 112 | 1.5.34 | [PRO] Portafolio de servicios CRM | 0.5d? | 2011-11-18 17:30 | 2011-11-21 11:30 |  | 1.69d |  |  | Sandra | 4h |
